# Задача "Автоматизация системы управления производства по проектам"

Schedule from MS Project, 2013-04-01 to 2014-02-03.
Sl

## Calendars

- Стандартный: Mon-Fri 08:30-12:00, 13:00-17:30; Sat-Sun off. Exceptions (off unless hours are given): 2009-05-01 to 2014-03-08 (recurring), 2013-05-01 to 2013-05-03, 2013-05-09 to 2013-05-10, 2013-06-12.

## Resources

| Resource |
| --- |
| Воробьева М.С. |
| Семенов И.П. |
| Калинина О.В. |
| Круглов Г.А. |
| Кабанова В.А. |
| Куницин С.М. |
| Иванов И.А. |
| Ядрышников В.П. |
| Пользователи |

## Schedule

| ID | WBS | Task | Duration | Start | Finish | Predecessors | Total slack | Free slack | Constraint | Resources | Work |
| --- | --- | --- | --- | --- | --- | --- | --- | --- | --- | --- | --- |
| 1 | 2672 | **Общий анализ постановки задачи** | 30d | 2013-04-01 | 2013-05-17 |  | 0d |  |  |  | 176h |
| 2 | 2672.23 | Провести анализ задачи | 15d | 2013-04-01 | 2013-04-19 |  | 0d |  | start no earlier than 2013-04-01 | Воробьева М.С. [50%] | 60h |
| 3 | 2672.24 | Обсудить концепцию задачи | 5d | 2013-04-22 | 2013-04-26 | 2 | 0d |  |  | Воробьева М.С. [20%]; Ядрышников В.П. [20%] | 16h |
| 4 | 1.3 | Доработать концепцию задачи | 7d | 2013-04-29 | 2013-05-14 | 3 | 0d |  |  | Воробьева М.С. [50%] | 28h |
| 5 | 1.4 | Согласовать концепцию задачи | 3d | 2013-05-15 | 2013-05-17 | 4 | 0d |  |  | Воробьева М.С.; Ядрышников В.П.; Иванов И.А. | 72h |
| 6 | 1 | **Автоматизация функции планирования по заказу покупателя по периодам (этап 1)** | 49d | 2013-04-15 | 2013-06-28 |  | 20d |  |  |  | 1054h |
| 7 | 2.1 | **Разработка (этап 1)** | 42d | 2013-04-15 | 2013-06-19 |  | 20d |  |  | Куницин С.М. | 894h |
| 8 | 2.1.1 | Создать ТЗ на основании постановки задачи и концепции | 20d | 2013-04-15 | 2013-05-17 | 3FS-10d | 178d | 0d |  | Куницин С.М.; Воробьева М.С. [30%] | 156h |
| 9 | 2.1.2 | Разработать ПО по ТЗ | 5d | 2013-05-20 | 2013-05-24 | 8 | 178d |  |  | Круглов Г.А. | 40h |
| 10 | 2.1.3 | Предоставить информацию для подготовки контрольного примера | 3d | 2013-05-20 | 2013-05-22 | 5 | 0d |  |  | Иванов И.А. | 24h |
| 11 | 2.1.4 | Подготовить контрольный пример, протестировать разработанный функционал | 3d | 2013-05-23 | 2013-05-27 | 10 | 0d |  |  | Куницин С.М.; Воробьева М.С. | 48h |
| 12 | 2.1.5 | Внести изменения в ТЗ по результатам тестирования | 4d | 2013-05-28 | 2013-05-31 | 11 | 0d |  |  | Куницин С.М.; Воробьева М.С. | 64h |
| 13 | 2.1.6 | Доработать ПО по результатам тестирования | 3d | 2013-05-29 | 2013-05-31 | 12SS+1d | 0d |  |  | Круглов Г.А. | 24h |
| 14 | 2.1.7 | Провести повторное тестирование, исправить ошибки | 1d | 2013-06-03 | 2013-06-03 | 13 | 0d |  |  | Куницин С.М.; Воробьева М.С. | 16h |
| 15 | 2.1.8 | Провести демонстрацию прототипа | 1d | 2013-06-04 | 2013-06-04 | 14 | 0d |  |  | Куницин С.М.; Воробьева М.С. [25%]; Калинина О.В.; Иванов И.А. | 26h |
| 16 | 2.1.9 | Предоставить информацию для тестовой эксплуатации | 1d | 2013-06-05 | 2013-06-05 | 15 | 0d |  |  | Иванов И.А. | 8h |
| 17 | 2.1.10 | Подготовиться к тестовой эксплуатации | 2d | 2013-06-06 | 2013-06-07 | 16 | 0d |  |  | Куницин С.М.; Калинина О.В. | 32h |
| 18 | 2.1.11 | Осуществить тестовый запуск | 3d | 2013-06-10 | 2013-06-13 | 17 | 0d |  |  | Куницин С.М.; Калинина О.В.; Иванов И.А. | 72h |
| 19 | 2.1.12 | Доработать ПО по результатам тестового запуска | 3d | 2013-06-14 | 2013-06-18 | 18 | 55d | 0d |  | Круглов Г.А. | 24h |
| 20 | 2.1.13 | Передать на внедрение | 1d | 2013-06-19 | 2013-06-19 | 19 | 55d | 0d |  | Куницин С.М.; Калинина О.В.; Иванов И.А. | 24h |
| 21 | 1.44 | **Внедрение (этап 1)** | 7d | 2013-06-20 | 2013-06-28 |  | 55d |  |  | Калинина О.В. | 160h |
| 22 | 1.44.1 | Разработать инструкции | 3d | 2013-06-20 | 2013-06-24 | 20 | 55d | 0d |  | Калинина О.В. | 24h |
| 23 | 2.2.2 | Предоставить перечень пользователей для обучения | 1d | 2013-06-20 | 2013-06-20 | 20 | 56d | 0d |  | Иванов И.А. | 8h |
| 24 | 1.44.2 | Составить график обучения, резервирование помещений и ресурсов | 1d | 2013-06-21 | 2013-06-21 | 23 | 56d | 1d |  | Калинина О.В. | 8h |
| 25 | 1.44.3 | Обучить пользователей | 3d | 2013-06-25 | 2013-06-27 | 22, 24 | 55d | 0d |  | Калинина О.В.; Пользователи | 48h |
| 26 | 1.44.4 | Передать в ОЭ | 1d | 2013-06-28 | 2013-06-28 | 25 | 55d | 0d |  | Калинина О.В.; Пользователи | 16h |

Notes:
- 1: Text1: Утвержденная постановка задачи на автоматизацию процесса / Text2: Концепция системы
- 8: Text1: Постановка задачи, согласованная концепция / Text2: ТЗ на разработку
- 9: Text1: ТЗ на разработку / Text2: Готовое для тестирования ПО
- 10: Text1: Концепция системы / Text2: Информация для контрольного примера
- 11: Text1: Готовое для тестирования ПО, информация для контрольного примера / Text2: Список доработок
- 12: Text1: Список доработок / Text2: ТЗ по результатам тестирования
- 13: Text1: ТЗ по результатам тестирования / Text2: Готовое для тестирования ПО
- 14: Text1: Готовое для тестирования ПО / Text2: Готовое для демонстрации ПО
- 15: Text1: Готовое для демонстрации ПО / Text2: Список доработок, решение по проведению тестовой эксплуатации
- 16: Text1: Решение по проведению тестовой эксплуатации / Text2: Информация, необходимая для тестовой эксплуатации
- 17: Text1: Список доработок, информация, необходимая для тестовой эксплуатации / Text2: Готовое для тестового запуска ПО
- 18: Text1: Готовое для тестового запуска ПО / Text2: Список доработок
- 19: Text1: Список доработок / Text2: Готовое для внедрения ПО
- 20: Text1: Готовое для внедрения ПО / Text2: Решение по проведению внедрения
- 22: Text1: Готовое для внедрения ПО, ТЗ / Text2: Инструкция
- 23: Text1: Решение по проведению внедрения / Text2: Перечень пользователей
- 24: Text1: Инструкция, СЗ на подготовку рабочих мест / Text2: СЗ в отдел обучения и развития
- 25: Text1: График, помещение, инструкция / Text2: обученные пользователи
- 26: Text1: Инструкция, СЗ на подготовку рабочих мест / Text2: Согласованный срок запуска системы

| ID | WBS | Task | Duration | Start | Finish | Predecessors | Total slack | Free slack | Resources | Work |
| --- | --- | --- | --- | --- | --- | --- | --- | --- | --- | --- |
| 27 | 2725 | **Автоматизация распределения затрат при закрытии периода (этап 2)** | 39d | 2013-04-29 | 2013-06-28 |  | 154d |  |  | 776h |
| 28 | 3.1 | **Разработка (этап 2)** | 31d | 2013-04-29 | 2013-06-18 |  | 154d |  | Воробьева М.С. | 616h |
| 29 | 3.1.1 | Создать ТЗ на основании постановки задачи и концепции | 10d | 2013-04-29 | 2013-05-17 | 3 | 154d | 0d | Воробьева М.С. | 80h |
| 30 | 3.1.2 | Разработать ПО по ТЗ | 3d | 2013-05-20 | 2013-05-22 | 29 | 154d | 0d | Круглов Г.А. | 24h |
| 31 | 3.1.3 | Подготовить контрольный пример, протестировать разработанный функционал | 2d | 2013-05-23 | 2013-05-24 | 30 | 154d | 0d | Воробьева М.С. | 16h |
| 32 | 3.1.4 | Внести изменения в ТЗ по результатам тестирования | 4d | 2013-05-27 | 2013-05-30 | 31 | 154d | 0d | Воробьева М.С. | 32h |
| 33 | 3.1.5 | Доработать ПО по результатам тестирования | 3d | 2013-05-28 | 2013-05-30 | 32SS+1d | 154d | 0d | Круглов Г.А. | 24h |
| 34 | 3.1.6 | Провести повторное тестирование, исправить ошибки | 1d | 2013-05-31 | 2013-05-31 | 33 | 154d | 0d | Воробьева М.С. | 8h |
| 35 | 3.1.7 | Провести демонстрацию прототипа | 1d | 2013-06-03 | 2013-06-03 | 34 | 154d | 0d | Воробьева М.С.; Иванов И.А.; Куницин С.М. | 24h |
| 36 | 3.1.8 | Предоставить информацию для тестовой эксплуатации | 1d | 2013-06-04 | 2013-06-04 | 35 | 154d | 0d | Иванов И.А. | 8h |
| 37 | 3.1.9 | Подготовиться к тестовой эксплуатации | 2d | 2013-06-05 | 2013-06-06 | 36 | 154d | 0d | Куницин С.М.; Калинина О.В. | 32h |
| 38 | 3.1.10 | Осуществить тестовый запуск | 3d | 2013-06-07 | 2013-06-11 | 37 | 154d | 0d | Куницин С.М.; Калинина О.В.; Иванов И.А. | 72h |
| 39 | 3.1.11 | Доработать ПО по результатам тестового запуска | 3d | 2013-06-13 | 2013-06-17 | 38 | 154d | 0d | Круглов Г.А. | 24h |
| 40 | 3.1.12 | Передать на внедрение | 1d | 2013-06-18 | 2013-06-18 | 39 | 154d | 0d | Куницин С.М.; Калинина О.В.; Иванов И.А. | 24h |
| 41 | 2725.4 | **Внедрение (этап 2)** | 8d | 2013-06-19 | 2013-06-28 |  | 154d |  | Калинина О.В. | 160h |
| 42 | 3.2.1 | Разработать инструкции | 3d | 2013-06-19 | 2013-06-21 | 40 | 154d | 0d | Калинина О.В. | 24h |
| 43 | 3.2.2 | Составить график обучения, резервирование помещений и ресурсов | 1d | 2013-06-24 | 2013-06-24 | 42 | 154d | 0d | Калинина О.В. | 8h |
| 44 | 3.2.3 | Обучить пользователей | 3d | 2013-06-25 | 2013-06-27 | 43 | 154d | 0d | Калинина О.В.; Пользователи | 48h |
| 45 | 3.2.4 | Передать в ОЭ | 1d | 2013-06-28 | 2013-06-28 | 44 | 154d |  | Калинина О.В.; Пользователи | 16h |
| 46 | 2722 | **Автоматизация функции корректировки плана по заказу покупателя (этап 3)** | 48d | 2013-06-14 | 2013-08-20 |  | 0d |  |  | 1104h |
| 47 | 4.1 | **Разработка (этап 3)** | 40d | 2013-06-14 | 2013-08-08 |  | 0d |  | Куницин С.М. | 944h |
| 48 | 4.1.1 | Создать ТЗ на основании постановки задачи и концепции | 10d | 2013-06-14 | 2013-06-27 | 18 | 0d |  | Куницин С.М.; Воробьева М.С. | 160h |
| 49 | 4.1.2 | Разработать ПО по ТЗ | 7d | 2013-06-28 | 2013-07-08 | 48 | 0d |  | Круглов Г.А. | 56h |
| 50 | 4.1.3 | Подготовить контрольный пример, протестировать разработанный функционал | 3d | 2013-07-09 | 2013-07-11 | 49 | 0d |  | Куницин С.М.; Воробьева М.С. | 48h |
| 51 | 4.1.4 | Внести изменения в ТЗ по результатам тестирования | 6d | 2013-07-12 | 2013-07-19 | 50 | 0d |  | Куницин С.М.; Воробьева М.С. | 96h |
| 52 | 4.1.5 | Доработать ПО по результатам тестирования | 5d | 2013-07-15 | 2013-07-19 | 51SS+1d | 0d |  | Круглов Г.А. | 40h |
| 53 | 4.1.6 | Провести повторное тестирование, исправить ошибки | 1d | 2013-07-22 | 2013-07-22 | 52 | 0d |  | Куницин С.М.; Воробьева М.С. | 16h |
| 54 | 4.1.7 | Провести демонстрацию прототипа | 1d | 2013-07-23 | 2013-07-23 | 53 | 0d |  | Куницин С.М.; Воробьева М.С.; Калинина О.В.; Иванов И.А. | 32h |
| 55 | 4.1.8 | Предоставить информацию для тестовой эксплуатации | 3d | 2013-07-24 | 2013-07-26 | 54 | 0d |  | Иванов И.А. | 24h |
| 56 | 4.1.9 | Подготовиться к тестовой эксплуатации | 2d | 2013-07-29 | 2013-07-30 | 55 | 0d |  | Куницин С.М.; Калинина О.В. | 32h |
| 57 | 4.1.10 | Осуществить тестовый запуск | 3d | 2013-07-31 | 2013-08-02 | 56 | 0d |  | Куницин С.М.; Калинина О.В.; Иванов И.А. | 72h |
| 58 | 4.1.11 | Доработать ПО по результатам тестового запуска | 3d | 2013-08-05 | 2013-08-07 | 57 | 0d |  | Круглов Г.А. | 24h |
| 59 | 4.1.12 | Передать на внедрение | 1d | 2013-08-08 | 2013-08-08 | 58 | 0d |  | Куницин С.М.; Калинина О.В.; Иванов И.А. | 24h |

Notes:
- 29: Text1: Постановка задачи, согласованная концепция / Text2: ТЗ на разработку
- 30: Text1: ТЗ на разработку / Text2: Готовое для тестирования ПО
- 31: Text1: Готовое для тестирования ПО / Text2: Список доработок
- 32: Text1: Список доработок / Text2: ТЗ по результатам тестирования
- 33: Text1: ТЗ по результатам тестирования / Text2: Готовое для тестирования ПО
- 34: Text1: Готовое для тестирования ПО / Text2: Готовое для внедрения ПО
- 35: Text1: Готовое для демонстрации ПО / Text2: Список доработок, решение по проведению тестовой эксплуатации
- 36: Text1: Решение по проведению тестовой эксплуатации / Text2: Информация, необходимая для тестовой эксплуатации
- 37: Text1: Список доработок, информация, необходимая для тестовой эксплуатации / Text2: Готовое для тестового запуска ПО
- 38: Text1: Готовое для тестового запуска ПО / Text2: Список доработок
- 39: Text1: Список доработок / Text2: Готовое для внедрения ПО
- 40: Text1: Готовое для внедрения ПО / Text2: Решение по проведению внедрения
- 48: Text1: Постановка задачи, согласованная концепция / Text2: ТЗ на разработку
- 49: Text1: ТЗ на разработку / Text2: Готовое для тестирования ПО
- 50: Text1: Готовое для тестирования ПО / Text2: Список доработок
- 51: Text1: Список доработок / Text2: ТЗ по результатам тестирования
- 52: Text1: ТЗ по результатам тестирования / Text2: Готовое для тестирования ПО
- 53: Text1: Готовое для тестирования ПО / Text2: Готовое для демонстрации ПО
- 54: Text1: Готовое для демонстрации ПО / Text2: Список доработок, решение по проведению тестовой эксплуатации
- 55: Text1: Решение по проведению тестовой эксплуатации / Text2: Информация, необходимая для тестовой эксплуатации
- 56: Text1: Список доработок, информация, необходимая для тестовой эксплуатации / Text2: Готовое для тестового запуска ПО
- 57: Text1: Готовое для тестового запуска ПО / Text2: Список доработок
- 58: Text1: Список доработок / Text2: Готовое для внедрения ПО
- 59: Text1: Готовое для внедрения ПО / Text2: Решение по проведению внедрения

| ID | WBS | Task | Duration | Start | Finish | Predecessors | Total slack | Free slack | Resources | Work |
| --- | --- | --- | --- | --- | --- | --- | --- | --- | --- | --- |
| 60 | 2722.27 | **Внедрение (этап 3)** | 8d | 2013-08-09 | 2013-08-20 |  | 117d |  | Калинина О.В. | 160h |
| 61 | 4.2.1 | Дополнить инструкции | 3d | 2013-08-09 | 2013-08-13 | 59 | 117d | 0d | Калинина О.В. | 24h |
| 62 | 4.2.2 | Составить график обучения, резервирование помещений и ресурсов | 1d | 2013-08-14 | 2013-08-14 | 61 | 117d | 0d | Калинина О.В. | 8h |
| 63 | 4.2.3 | Обучить пользователей | 3d | 2013-08-15 | 2013-08-19 | 62 | 117d | 0d | Калинина О.В.; Пользователи | 48h |
| 64 | 4.2.4 | Передать в ОЭ | 1d | 2013-08-20 | 2013-08-20 | 63 | 117d |  | Калинина О.В.; Пользователи | 16h |
| 65 | 2723 | **Автоматизация функции выполнения плана закупок (этап 3)** | 52d | 2013-08-05 | 2013-10-15 |  | 77d |  |  | 1200h |
| 66 | 5.1 | **Разработка (этап 3)** | 46d | 2013-08-05 | 2013-10-07 |  | 77d |  | Куницин С.М. | 1048h |
| 67 | 5.1.1 | Создать ТЗ на основании постановки задачи и концепции | 10d | 2013-08-05 | 2013-08-16 | 57 | 77d | 0d | Куницин С.М.; Воробьева М.С. | 160h |
| 68 | 5.1.2 | Разработать ПО по ТЗ | 10d | 2013-08-19 | 2013-08-30 | 67 | 77d | 0d | Круглов Г.А. | 80h |
| 69 | 5.1.3 | Предоставить информацию для подготовки контрольного примера | 3d | 2013-09-02 | 2013-09-04 | 68 | 77d | 0d | Иванов И.А. | 24h |
| 70 | 5.1.4 | Подготовить контрольный пример, протестировать разработанный функционал | 3d | 2013-09-05 | 2013-09-09 | 69 | 77d | 0d | Куницин С.М.; Воробьева М.С. | 48h |
| 71 | 5.1.5 | Внести изменения в ТЗ по результатам тестирования | 6d | 2013-09-10 | 2013-09-17 | 70 | 77d | 0d | Куницин С.М.; Воробьева М.С. | 96h |
| 72 | 5.1.6 | Доработать ПО по результатам тестирования | 5d | 2013-09-11 | 2013-09-17 | 71SS+1d | 77d | 0d | Круглов Г.А. | 40h |
| 73 | 5.1.7 | Провести повторное тестирование, исправить ошибки | 5d | 2013-09-18 | 2013-09-24 | 72 | 77d | 0d | Куницин С.М.; Воробьева М.С. | 80h |
| 74 | 5.1.8 | Провести демонстрацию прототипа | 1d | 2013-09-25 | 2013-09-25 | 73 | 77d | 0d | Куницин С.М.; Воробьева М.С.; Калинина О.В.; Иванов И.А. | 32h |
| 75 | 5.1.9 | Предоставить информацию для тестовой эксплуатации | 3d | 2013-09-26 | 2013-09-30 | 74 | 77d | 0d | Иванов И.А. | 24h |
| 76 | 5.1.10 | Подготовиться к тестовой эксплуатации | 1d | 2013-10-01 | 2013-10-01 | 75 | 77d | 0d | Куницин С.М.; Калинина О.В. | 16h |
| 77 | 5.1.11 | Осуществить тестовый запуск | 2d | 2013-10-02 | 2013-10-03 | 76 | 77d | 0d | Куницин С.М.; Калинина О.В.; Иванов И.А. | 48h |
| 78 | 5.1.12 | Доработать ПО по результатам тестового запуска | 1d | 2013-10-04 | 2013-10-04 | 77 | 77d | 0d | Круглов Г.А. | 8h |
| 79 | 5.1.13 | Передать на внедрение | 1d | 2013-10-07 | 2013-10-07 | 78 | 77d | 0d | Куницин С.М.; Калинина О.В.; Иванов И.А. | 24h |
| 80 | 2723.7 | **Внедрение (этап 3)** | 6d | 2013-10-08 | 2013-10-15 |  | 77d |  | Калинина О.В. | 152h |
| 81 | 5.2.1 | Разработать инструкции | 3d | 2013-10-08 | 2013-10-10 | 79 | 80d |  | Калинина О.В. | 24h |
| 82 | 5.2.2 | Предоставить перечень пользователей для обучения | 1d | 2013-10-08 | 2013-10-08 | 79 | 77d | 0d | Иванов И.А. | 8h |
| 83 | 5.2.3 | Составить график обучения, резервирование помещений и ресурсов | 1d | 2013-10-09 | 2013-10-09 | 82 | 77d | 0d | Калинина О.В. | 8h |
| 84 | 5.2.4 | Обучить пользователей | 3d | 2013-10-10 | 2013-10-14 | 83, 82 | 77d | 0d | Калинина О.В.; Пользователи | 48h |
| 85 | 5.2.5 | Передать в ОЭ | 1d | 2013-10-15 | 2013-10-15 | 84 | 77d |  | Калинина О.В.; Пользователи | 16h |

Notes:
- 61: Text1: Готовое для внедрения ПО, ТЗ / Text2: Инструкция
- 62: Text1: Инструкция, СЗ на подготовку рабочих мест / Text2: СЗ в отдел обучения и развития
- 63: Text1: График, помещение, инструкция / Text2: обученные пользователи
- 64: Text1: Инструкция, СЗ на подготовку рабочих мест / Text2: Согласованный срок запуска системы
- 67: Text1: Постановка задачи, согласованная концепция / Text2: ТЗ на разработку
- 68: Text1: ТЗ на разработку / Text2: Готовое для тестирования ПО
- 69: Text1: Концепция системы / Text2: Информация для контрольного примера
- 70: Text1: Готовое для тестирования ПО, информация для контрольного примера / Text2: Список доработок
- 71: Text1: Список доработок / Text2: ТЗ по результатам тестирования
- 72: Text1: ТЗ по результатам тестирования / Text2: Готовое для тестирования ПО
- 73: Text1: Готовое для тестирования ПО / Text2: Готовое для демонстрации ПО
- 74: Text1: Готовое для демонстрации ПО / Text2: Список доработок, решение по проведению тестовой эксплуатации
- 75: Text1: Решение по проведению тестовой эксплуатации / Text2: Информация, необходимая для тестовой эксплуатации
- 76: Text1: Список доработок, информация, необходимая для тестовой эксплуатации / Text2: Готовое для тестового запуска ПО
- 77: Text1: Готовое для тестового запуска ПО / Text2: Список доработок
- 78: Text1: Список доработок / Text2: Готовое для внедрения ПО
- 79: Text1: Готовое для внедрения ПО / Text2: Решение по проведению внедрения
- 81: Text1: Готовое для внедрения ПО, ТЗ / Text2: Инструкция
- 82: Text1: Решение по проведению внедрения / Text2: Перечень пользователей
- 83: Text1: Инструкция, СЗ на подготовку рабочих мест / Text2: СЗ в отдел обучения и развития
- 84: Text1: График, помещение, инструкция / Text2: обученные пользователи
- 85: Text1: Инструкция, СЗ на подготовку рабочих мест / Text2: Согласованный срок запуска системы

| ID | WBS | Task | Duration | Start | Finish | Predecessors | Total slack | Free slack | Resources | Work |
| --- | --- | --- | --- | --- | --- | --- | --- | --- | --- | --- |
| 86 | 2727 | **Опытная эксплуатация планирования и учета факта** | 99d | 2013-07-01 | 2013-11-15 |  | 55d |  | Калинина О.В. | 8576h |
| 87 | 2727.23 | Создать трекер для централизованного сбора необходимых доработок | 1d | 2013-07-01 | 2013-07-01 | 26 | 55d | 0d | Калинина О.В. | 8h |
| 88 | 2727.24 | Осуществить сбор информации по доработкам | 90d | 2013-07-02 | 2013-11-05 | 87 | 55d | 0d | Калинина О.В. | 720h |
| 89 | 2727.25 | Проанализировать информацию по доработкам | 90d | 2013-07-05 | 2013-11-08 | 88SS+3d | 55d | 0d | Куницин С.М.; Воробьева М.С. | 1440h |
| 90 | 2727.26 | Разработать ТЗ, внести изменения в ТЗ | 88d | 2013-07-09 | 2013-11-08 | 89SS+2d | 55d | 0d | Куницин С.М.; Воробьева М.С. | 1408h |
| 91 | 2727.27 | СогласоватьТЗ (изменений в ТЗ) с заказчиками | 2d | 2013-07-10 | 2013-07-11 | 90SS+1d | 55d | 0d | Куницин С.М.; Воробьева М.С. | 32h |
| 92 | 2727.28 | Доработать ПО по ТЗ | 88d | 2013-07-12 | 2013-11-13 | 91SS+2d | 55d | 0d | Круглов Г.А. | 704h |
| 93 | 2727.29 | Протестировать доработки и передать в ОЭ (опытную эксплуатацию) | 88d | 2013-07-16 | 2013-11-15 | 92SS+2d | 55d | 0d | Куницин С.М.; Воробьева М.С. | 1408h |
| 94 | 2727.30 | Внести изменения в инструкции пользователей по результатам доработок | 88d | 2013-07-16 | 2013-11-15 | 92SS+2d | 55d |  | Калинина О.В. | 704h |
| 95 | 2727.31 | Доработать ПО по результатам тестирования | 86d | 2013-07-18 | 2013-11-15 | 93SS+2d | 55d | 0d | Круглов Г.А. | 688h |
| 96 | 2727.32 | Провести повторное тестирование, исправить ошибки | 82d | 2013-07-23 | 2013-11-14 | 95SS+3d | 55d | 0d | Калинина О.В. | 656h |
| 97 | 2727.33 | Передать в промышленную эксплуатацию | 1d | 2013-11-15 | 2013-11-15 | 96 | 55d |  | Калинина О.В.; Иванов И.А. | 16h |
| 98 | 1 | **Автоматизация бизнес-процесса планирования (этап 4)** | 125d | 2013-08-09 | 2014-02-03 |  | 0d |  |  | 5928h |
| 99 | 1.10 | **Разработка (этап 4)** | 68d | 2013-08-09 | 2013-11-13 |  | 0d |  | Куницин С.М. | 1600h |
| 100 | 1.10.22 | Проектирование процесса в КДиП | 10d | 2013-08-09 | 2013-08-22 | 59 | 0d |  | Кабанова В.А. | 80h |
| 101 | 1.10.23 | Согласование спроектированного процесса | 2d | 2013-08-23 | 2013-08-26 | 100 | 0d |  | Кабанова В.А.; Воробьева М.С.; Иванов И.А. | 48h |
| 102 | 1.10.24 | Постановка задачи для доработки документов, справочников, макросов | 5d | 2013-08-27 | 2013-09-02 | 101 | 88d | 0d | Кабанова В.А. | 40h |
| 103 | 1.10.25 | Создать ТЗ на основании постановки задачи и концепции | 10d | 2013-09-03 | 2013-09-16 | 102 | 88d | 0d | Куницин С.М.; Воробьева М.С. | 160h |
| 104 | 1.10.26 | Разработать ПО по ТЗ | 10d | 2013-09-17 | 2013-09-30 | 103 | 88d |  | Семенов И.П. | 80h |
| 105 | 7.1.6 | Предоставить информацию для подготовки контрольного примера | 5d | 2013-08-27 | 2013-09-02 | 101 | 0d |  | Иванов И.А. | 40h |
| 106 | 1.10.27 | Подготовить контрольный пример, протестировать разработанный функционал | 3d | 2013-09-03 | 2013-09-05 | 105 | 0d |  | Кабанова В.А.; Куницин С.М.; Воробьева М.С. | 72h |
| 107 | 1.10.28 | Внести изменения в ПЗ по результатам тестирования | 11d | 2013-09-06 | 2013-09-20 | 106 | 0d |  | Кабанова В.А. | 88h |
| 108 | 1.10.29 | Внести изменения в ТЗ по результатам тестирования | 11d | 2013-09-23 | 2013-10-07 | 107 | 0d |  | Куницин С.М. | 88h |
| 109 | 1.10.30 | Доработать ПО по результатам тестирования | 10d | 2013-10-08 | 2013-10-21 | 108 | 0d |  | Семенов И.П. | 80h |
| 110 | 1.10.31 | Провести повторное тестирование, исправить ошибки | 5d | 2013-10-22 | 2013-10-28 | 109 | 0d |  | Кабанова В.А.; Куницин С.М. | 80h |
| 111 | 1.10.32 | Провести демонстрацию прототипа | 1d | 2013-10-29 | 2013-10-29 | 110 | 0d |  | Кабанова В.А.; Куницин С.М.; Воробьева М.С.; Калинина О.В.; Иванов И.А. | 40h |
| 112 | 1.10.33 | Подготовиться к тестовой эксплуатации | 1d | 2013-10-30 | 2013-10-30 | 111 | 0d |  | Кабанова В.А.; Куницин С.М.; Калинина О.В. | 24h |
| 113 | 1.10.37 | Предоставить информацию для тестовой эксплуатации | 3d | 2013-10-31 | 2013-11-05 | 112 | 0d |  | Иванов И.А. | 24h |
| 114 | 1.10.34 | Осуществить тестовый запуск | 2d | 2013-11-06 | 2013-11-07 | 113 | 0d |  | Куницин С.М.; Калинина О.В.; Кабанова В.А.; Иванов И.А. | 64h |
| 115 | 1.10.35 | Доработать ПО по результатам тестового запуска | 3d | 2013-11-08 | 2013-11-12 | 114 | 0d |  | Семенов И.П. | 24h |
| 116 | 1.10.36 | Передать на внедрение | 1d | 2013-11-13 | 2013-11-13 | 115 | 0d |  | Куницин С.М.; Калинина О.В.; Иванов И.А. | 24h |

Notes:
- 86: Text1: Готовое для внедрения ПО, ТЗ / Text2: Согласованный срок запуска системы в ОЭ
- 87: Text1: Определение местонахождения трекера и предоставление доступа всем заинтересованным лицам / Text2: Трекер (в формате Excel) для централизованного сбора информации
- 88: Text1: Описанные в трекере проблемы по работе системы / Text2: Систематизированная информация по доработкам
- 89: Text1: Систематизированная информация по доработкам / Text2: Сформированная постановка задачи по доработкам
- 90: Text1: Сформированная постановка задачи по доработкам / Text2: ТЗ на доработку
- 91: Text1: ТЗ на доработку / Text2: Согласованное ТЗ на доработку
- 92: Text1: Согласованное ТЗ на доработку / Text2: Готовое для тестирования ПО
- 93: Text1: Готовое для тестирования ПО / Text2: Готовое для ОЭ ПО
- 94: Text1: ТЗ, Готовое для ОЭ ПО / Text2: Инструкция
- 95: Text1: Утвержденное ТЗ / Text2: Готовое для тестирования ПО
- 96: Text1: Готовое для тестирования ПО / Text2: Готовое для ПЭ ПО
- 97: Text1: Готовое для ПЭ ПО / Text2: Работающая система
- 100: Text1: Постановка задачи, согласованная концепция / Text2: Прототип процесса в КДиП
- 101: Text1: Прототип процесса в КДиП / Text2: Список доработок прототипа процесса
- 102: Text1: Постановка задачи, согласованная концепция, Список доработок прототипа процесса / Text2: ПЗ по бизнес-процессу
- 103: Text1: Постановка задачи, согласованная концепция, постановка задачи по БП / Text2: ТЗ на разработку
- 104: Text1: ТЗ на разработку / Text2: Готовое для тестирования ПО
- 105: Text1: Концепция системы, ПЗ по бизнес-процессу / Text2: Информация для контрольного примера
- 106: Text1: Готовое для тестирования ПО / Text2: Список доработок
- 107: Text1: Список доработок / Text2: ПЗ по результатам тестирования
- 108: Text1: Список доработок / Text2: ТЗ по результатам тестирования
- 109: Text1: ТЗ по результатам тестирования / Text2: Готовое для тестирования ПО
- 110: Text1: Готовое для тестирования ПО / Text2: Готовое для демонстрации ПО
- 111: Text1: Готовое для демонстрации ПО / Text2: Список доработок, решение по проведению тестовой эксплуатации
- 112: Text1: Решение по проведению тестовой эксплуатации / Text2: Информация, необходимая для тестовой эксплуатации
- 113: Text1: Список доработок, информация, необходимая для тестовой эксплуатации / Text2: Готовое для тестового запуска ПО
- 114: Text1: Готовое для тестового запуска ПО / Text2: Список доработок
- 115: Text1: Список доработок / Text2: Готовое для внедрения ПО
- 116: Text1: Готовое для внедрения ПО / Text2: Решение по проведению внедрения

| ID | WBS | Task | Type | Duration | Start | Finish | Predecessors | Total slack | Free slack | Resources | Work |
| --- | --- | --- | --- | --- | --- | --- | --- | --- | --- | --- | --- |
| 117 | 1.11 | **Внедрение (этап 4)** |  | 6d | 2013-11-14 | 2013-11-21 |  | 0d |  | Кабанова В.А. | 208h |
| 118 | 1.11.5 | Разработать инструкции |  | 5d | 2013-11-14 | 2013-11-20 | 116 | 52d |  | Кабанова В.А. | 40h |
| 119 | 7.2.2 | Предоставить перечень пользователей для обучения |  | 1d | 2013-11-14 | 2013-11-14 | 116 | 0d |  | Иванов И.А. | 8h |
| 120 | 1.11.6 | Составить график обучения, резервирование помещений и ресурсов |  | 1d | 2013-11-15 | 2013-11-15 | 119 | 0d |  | Кабанова В.А.; Калинина О.В. | 16h |
| 121 | 1.11.7 | Обучить пользователей |  | 3d | 2013-11-18 | 2013-11-20 | 120, 119 | 0d |  | Кабанова В.А.; Калинина О.В.; Пользователи | 72h |
| 122 | 1.11.8 | Передать в ОЭ |  | 1d | 2013-11-21 | 2013-11-21 | 121 | 0d |  | Кабанова В.А.; Калинина О.В.; Пользователи | 24h |
| 123 | 7.3 | **Опытная эксплуатация (этап 4)** |  | 51d | 2013-11-22 | 2014-02-03 |  | 0d |  | Калинина О.В. | 4120h |
| 124 | 7.3.1 | Создать трекер для централизованного сбора необходимых доработок |  | 1d | 2013-11-22 | 2013-11-22 | 122 | 0d |  | Калинина О.В. | 8h |
| 125 | 7.3.2 | Осуществить сбор информации по доработкам |  | 40d | 2013-11-25 | 2014-01-20 | 124 | 0d |  | Калинина О.В. | 320h |
| 126 | 7.3.3 | Проанализировать информацию по доработкам |  | 37d | 2013-11-28 | 2014-01-20 | 125SS+3d | 0d |  | Кабанова В.А.; Куницин С.М.; Воробьева М.С. | 888h |
| 127 | 7.3.4 | Внести изменения в ПЗ |  | 35d | 2013-12-02 | 2014-01-20 | 126SS+2d | 0d |  | Кабанова В.А. | 280h |
| 128 | 7.3.5 | Разработать ТЗ, внести изменения в ТЗ |  | 2d | 2013-12-03 | 2013-12-04 | 127SS+1d | 0d |  | Куницин С.М.; Воробьева М.С. | 32h |
| 129 | 7.3.6 | Согласовать ПЗ,ТЗ (изменений в ПЗ,ТЗ) с заказчиками |  | 32d | 2013-12-05 | 2014-01-20 | 128SS+2d | 0d |  | Кабанова В.А.; Куницин С.М.; Воробьева М.С. | 768h |
| 130 | 7.3.7 | Доработать ПО по ТЗ |  | 30d | 2013-12-09 | 2014-01-20 | 129SS+2d | 0d |  | Круглов Г.А. | 240h |
| 131 | 7.3.8 | Протестировать доработки и передать в ОЭ (опытную эксплуатацию) |  | 38d | 2013-12-11 | 2014-02-03 | 130SS+2d | 0d |  | Куницин С.М.; Воробьева М.С. | 608h |
| 132 | 7.3.9 | Внести изменения в инструкции пользователей по результатам доработок |  | 26d | 2013-12-13 | 2014-01-20 | 131SS+2d | 10d | 0d | Калинина О.В. | 208h |
| 133 | 7.3.10 | Доработать ПО по результатам тестирования |  | 24d | 2013-12-17 | 2014-01-20 | 132SS+2d | 10d | 0d | Круглов Г.А. | 192h |
| 134 | 7.3.11 | Провести повторное тестирование, исправить ошибки |  | 21d | 2013-12-20 | 2014-01-20 | 133SS+3d | 10d | 0d | Калинина О.В. | 168h |
| 135 | 7.3.12 | Передать в промышленную эксплуатацию | milestone | 0d | 2014-01-20 | 2014-01-20 | 134 | 10d |  | Калинина О.В.; Иванов И.А. |  |

Notes:
- 118: Text1: Готовое для внедрения ПО, ТЗ / Text2: Инструкция
- 119: Text1: Решение по проведению внедрения / Text2: Перечень пользователей
- 120: Text1: Инструкция, СЗ на подготовку рабочих мест / Text2: СЗ в отдел обучения и развития
- 121: Text1: График, помещение, инструкция / Text2: обученные пользователи
- 122: Text1: Инструкция, СЗ на подготовку рабочих мест / Text2: Согласованный срок запуска системы
- 124: Text1: Определение местонахождения трекера и предоставление доступа всем заинтересованным лицам / Text2: Трекер (в формате Excel) для централизованного сбора информации
- 125: Text1: Описанные в трекере проблемы по работе системы / Text2: Систематизированная информация по доработкам
- 126: Text1: Систематизированная информация по доработкам / Text2: Сформированная постановка задачи по доработкам
- 127: Text1: Сформированная постановка задачи по доработкам / Text2: ТЗ на доработку
- 128: Text1: Сформированная постановка задачи по доработкам / Text2: ПЗ на доработку
- 129: Text1: ПЗ,ТЗ на доработку / Text2: Согласованное ПЗ, ТЗ на доработку
- 130: Text1: Согласованное ТЗ на доработку / Text2: Готовое для тестирования ПО
- 131: Text1: Готовое для тестирования ПО / Text2: Готовое для ОЭ ПО
- 132: Text1: ТЗ, Готовое для ОЭ ПО / Text2: Инструкция
- 133: Text1: Утвержденное ТЗ / Text2: Готовое для тестирования ПО
- 134: Text1: Готовое для тестирования ПО / Text2: Готовое для ПЭ ПО
- 135: Text1: Готовое для ПЭ ПО / Text2: Работающая бизнес-процесс
